# ДЕМО-ПЛАН. Поставка функционала на промышленный контур

How a schedule from MS Project XML changed from version to version. A marks actual dates.

## Version 1 (data date 2026-09-18, saved 2026-10-17)

Note of the change: feat(график): ABOP читает планы MS Project — и сверяется с их собственным критическим путём

| ID | WBS | Task | Start | Finish | Predecessors | Complete | Total float |
| --- | --- | --- | --- | --- | --- | --- | --- |
| 1 | 1 | **Контур поставки** | 2026-08-03 A | 2026-11-20 |  | 35% | 0d |
| 2 |  | Анонсирована поставка релиза 4.2 | 2026-08-03 A | 2026-08-04 |  | 100% | 0d |
| 3 |  | Скрининг в ИБ | 2026-08-05 A | 2026-08-11 | 2 | 100% | 0d |
| 4 |  | Развертывание поставки на предпрод | 2026-08-12 A | 2026-08-13 | 3 | 100% | 0d |
| 5 |  | Тестирование функционала расчёта тарифов | 2026-08-14 A | 2026-08-27 | 4 | 80% | 0d |
| 6 |  | Исправлены дефекты по итогам тестирования | 2026-08-28 A | 2026-09-10 | 5 | 40% | 0d |
| 7 |  | Тестирование Е2Е | 2026-09-11 | 2026-09-21 | 6 |  | 0d |
| 8 |  | Согласованы артефакты для проведения ПСИ | 2026-09-22 | 2026-09-22 | 7 |  | 2d |
| 9 |  | Проведено ПСИ | 2026-09-23 | 2026-10-06 | 8 |  | 0d |
| 10 |  | Согласованы ЗНИ релиза | 2026-10-07 | 2026-10-20 | 9 |  | 0d |
| 11 |  | Выполнены релизы ИС (вывод в пром) | 2026-10-21 | 2026-10-23 | 10 |  | 0d |
| 12 |  | Тиражирование на региональные площадки | 2026-10-26 | 2026-11-20 | 11 |  | 0d |
| 13 |  | Вывод на ПРОМ завершён | 2026-11-20 | 2026-11-20 | 12 |  | 0d |
| 14 | 2 | **Сопутствующие работы** | 2026-08-10 A | 2026-11-13 |  | 20% | 12d |
| 15 |  | Подготовка инструкций пользователя | 2026-08-10 A | 2026-08-21 |  | 60% | 25d |
| 16 |  | Обучение группы поддержки | 2026-10-26 | 2026-11-06 | 15 |  | 12d |
| 17 |  | Нагрузочное тестирование контура | 2026-09-28 | 2026-10-23 | 4FF |  | 18d |
| 18 |  | Настройка дашбордов мониторинга | 2026-11-02 | 2026-11-13 | 11SS |  | 9d |

## Version 2 (data date 2026-09-18, saved 2026-10-17)

Note of the change: feat(график): там, где регламент о работе молчит, длительность берёт сам план

Last finish stays 2026-11-20.

Changed:

| ID | Task | Duration |
| --- | --- | --- |
| 1 | **Контур поставки** | none → 80d |
| 2 | Анонсирована поставка релиза 4.2 | none → 2d |
| 3 | Скрининг в ИБ | none → 5d |
| 4 | Развертывание поставки на предпрод | none → 2d |
| 5 | Тестирование функционала расчёта тарифов | none → 10d |
| 6 | Исправлены дефекты по итогам тестирования | none → 10d |
| 7 | Тестирование Е2Е | none → 7d |
| 8 | Согласованы артефакты для проведения ПСИ | none → 1d |
| 9 | Проведено ПСИ | none → 10d |
| 10 | Согласованы ЗНИ релиза | none → 10d |
| 11 | Выполнены релизы ИС (вывод в пром) | none → 3d |
| 12 | Тиражирование на региональные площадки | none → 20d |
| 13 | Вывод на ПРОМ завершён | none → 1d |
| 14 | **Сопутствующие работы** | none → 70d |
| 15 | Подготовка инструкций пользователя | none → 10d |
| 16 | Обучение группы поддержки | none → 10d |
| 17 | Нагрузочное тестирование контура | none → 20d |
| 18 | Настройка дашбордов мониторинга | none → 10d |
